# CBP_P3B

How a schedule from MS Project changed from version to version. A marks actual dates.

## Version 1 (saved 2026-03-14, file CBP_P3B.mpp)

| ID | WBS | Task | Duration | Start | Finish | Predecessors | Total float |
| --- | --- | --- | --- | --- | --- | --- | --- |
| 1 | 1 | **Conveyor Belt Project** | 530d | 2010-01-04 | 2012-02-02 |  | 0d |
| 2 | 1.1 | **Hardware** | 440d | 2010-02-08 | 2011-10-28 |  | 0d |
| 3 |  | Hardware specifications | 50d | 2010-02-08 | 2010-04-16 | 24 | 0d |
| 4 |  | Hardware design | 70d | 2010-04-19 | 2010-07-27 | 3 | 0d |
| 5 |  | Hardware documentation | 30d | 2010-07-28 | 2010-09-08 | 4 | 0d |
| 6 |  | Prototypes | 80d | 2010-11-18 | 2011-03-15 | 25 | 50d |
| 7 |  | Order circuit boards | 5d | 2011-06-30 | 2011-07-07 | 26 | 5d |
| 8 |  | Assemble preproduction models | 30d | 2011-09-19 | 2011-10-28 | 7FS+50d | 5d |
| 9 | 1.2 | **Operating system** | 445d | 2010-02-08 | 2011-11-04 |  | 0d |
| 10 |  | Kernel specifications | 20d | 2010-02-08 | 2010-03-05 | 24 | 30d |
| 11 | 1.2.2 | **Drivers** | 310d | 2010-03-08 | 2011-05-24 |  | 0d |
| 12 |  | Disk drivers | 100d | 2010-03-08 | 2010-07-27 | 10 | 30d |
| 13 |  | Serial I/O drivers | 130d | 2010-11-18 | 2011-05-24 | 25 | 0d |
| 14 |  | Memory management | 90d | 2010-03-08 | 2010-07-13 | 10 | 40d |
| 15 |  | Operating system documentation | 25d | 2010-03-29 | 2010-04-30 | 10 | 90d |
| 16 |  | Network interface | 90d | 2011-06-30 | 2011-11-04 | 26 | 0d |
| 17 | 1.3 | **Utilities** | 395d | 2010-03-08 | 2011-09-23 |  | 30d |
| 18 |  | Utilities specifications | 15d | 2010-03-08 | 2010-03-26 | 24 | 35d |
| 19 |  | Routine utilities | 60d | 2010-03-29 | 2010-06-21 | 18 | 55d |
| 20 |  | Complex utilities | 80d | 2010-03-29 | 2010-07-20 | 18 | 35d |
| 21 |  | Utilities documentation | 20d | 2010-05-03 | 2010-05-28 | 18 | 70d |
| 22 |  | Shell | 60d | 2011-06-30 | 2011-09-23 | 26 | 30d |
| 23 | 1.4 | **System integration** | 530d | 2010-01-04 | 2012-02-02 |  | 0d |
| 24 |  | Architectural decisions | 25d | 2010-01-04 | 2010-02-05 |  | 0d |
| 25 |  | Integration first phase | 50d | 2010-09-09 | 2010-11-17 | 5, 12, 14, 15, 19, 20, 21 | 0d |
| 26 |  | System hard/software test | 25d | 2011-05-25 | 2011-06-29 | 6, 13 | 0d |
| 27 |  | Project documentation | 50d | 2011-06-30 | 2011-09-09 | 26 | 40d |
| 28 |  | Integration acceptance testing | 60d | 2011-11-07 | 2012-02-02 | 8, 16, 22, 27 | 0d |

## Version 2 (data date 2011-01-01, saved 2026-03-14, file CBP_P3B_with_actuals.xml)

Note of the change: Add modified MS Project XML file with actuals, baseline, and status date

Last finish stays 2012-02-02. Complete tasks 0 → 13.

Changed:

| ID | Task | Start | Finish | Complete | Total float | Other |
| --- | --- | --- | --- | --- | --- | --- |
| 1 | **Conveyor Belt Project** |  |  |  | 0d → none | baseline start none → 2010-01-04; baseline finish none → 2012-02-02 |
| 2 | **Hardware** |  |  |  | 0d → none | baseline start none → 2010-02-08; baseline finish none → 2011-10-28 |
| 3 | Hardware specifications | 2010-02-08 A |  | 0% → 100% | 0d → none | baseline start none → 2010-02-08; baseline finish none → 2010-04-16 |
| 4 | Hardware design |  |  | 0% → 100% | 0d → none | baseline start none → 2010-04-19; baseline finish none → 2010-07-27 |
| 5 | Hardware documentation |  |  | 0% → 100% | 0d → none | baseline start none → 2010-07-28; baseline finish none → 2010-09-08 |
| 6 | Prototypes |  |  | 0% → 44% |  | baseline start none → 2010-11-18; baseline finish none → 2011-03-15 |
| 7 | Order circuit boards |  |  |  |  | baseline start none → 2011-06-30; baseline finish none → 2011-07-07 |
| 8 | Assemble preproduction models |  |  |  |  | baseline start none → 2011-09-19; baseline finish none → 2011-10-28 |
| 9 | **Operating system** |  |  |  | 0d → none | baseline start none → 2010-02-08; baseline finish none → 2011-11-04 |
| 10 | Kernel specifications | 2010-02-08 A |  | 0% → 100% | 30d → none | baseline start none → 2010-02-08; baseline finish none → 2010-03-05 |
| 11 | **Drivers** |  |  |  | 0d → none | baseline start none → 2010-03-08; baseline finish none → 2011-05-24 |
| 12 | Disk drivers |  |  | 0% → 100% | 30d → none | baseline start none → 2010-03-08; baseline finish none → 2010-07-27 |
| 13 | Serial I/O drivers |  |  | 0% → 22% | 0d → none | baseline start none → 2010-11-18; baseline finish none → 2011-05-24 |
| 14 | Memory management |  |  | 0% → 100% | 40d → none | baseline start none → 2010-03-08; baseline finish none → 2010-07-13 |
| 15 | Operating system documentation |  |  | 0% → 100% | 90d → none | baseline start none → 2010-03-29; baseline finish none → 2010-04-30 |
| 16 | Network interface |  |  |  | 0d → none | baseline start none → 2011-06-30; baseline finish none → 2011-11-04 |
| 17 | **Utilities** |  |  |  |  | baseline start none → 2010-03-08; baseline finish none → 2011-09-23 |
| 18 | Utilities specifications | 2010-03-08 A |  | 0% → 100% | 35d → none | baseline start none → 2010-03-08; baseline finish none → 2010-03-26 |
| 19 | Routine utilities |  |  | 0% → 100% | 55d → none | baseline start none → 2010-03-29; baseline finish none → 2010-06-21 |
| 20 | Complex utilities |  |  | 0% → 100% | 35d → none | baseline start none → 2010-03-29; baseline finish none → 2010-07-20 |
| 21 | Utilities documentation |  |  | 0% → 100% | 70d → none | baseline start none → 2010-05-03; baseline finish none → 2010-05-28 |
| 22 | Shell |  |  |  |  | baseline start none → 2011-06-30; baseline finish none → 2011-09-23 |
| 23 | **System integration** |  |  |  | 0d → none | baseline start none → 2010-01-04; baseline finish none → 2012-02-02 |
| 24 | Architectural decisions | 2010-01-04 A | 2010-02-05 A | 0% → 100% | 0d → none | baseline start none → 2010-01-04; baseline finish none → 2010-02-05 |
| 25 | Integration first phase |  |  | 0% → 100% | 0d → none | baseline start none → 2010-09-09; baseline finish none → 2010-11-17 |
| 26 | System hard/software test |  |  |  | 0d → none | baseline start none → 2011-05-25; baseline finish none → 2011-06-29 |
| 27 | Project documentation |  |  |  |  | baseline start none → 2011-06-30; baseline finish none → 2011-09-09 |
| 28 | Integration acceptance testing |  |  |  | 0d → none | baseline start none → 2011-11-07; baseline finish none → 2012-02-02 |
